# BITTRADE交易平台

How a schedule from MS Project changed from version to version. A marks actual dates.

## Version 1 (saved 2019-07-12)

Note of the change: add bittrade.mpp

| ID | WBS | Task | Duration | Start | Finish | Predecessors | Total float | Constraint |
| --- | --- | --- | --- | --- | --- | --- | --- | --- |
| 1 |  | 架构选型、搭建 | 5d | 2019-06-27 | 2019-07-03 |  | 1d | start no earlier than 2019-06-27 |
| 2 | 2 | **数据库设计** | 3d | 2019-06-27 | 2019-07-01 |  |  |  |
| 3 |  | 委托表 | 0.2d | 2019-06-27 | 2019-06-27 |  | 2.8d |  |
| 4 |  | 委托明细表 | 0.2d | 2019-06-27 | 2019-06-27 |  | 2.8d |  |
| 5 |  | 币币钱包表 | 0.2d | 2019-06-27 | 2019-06-27 |  | 2.8d |  |
| 6 |  | 币币钱包流水表 | 0.2d | 2019-06-27 | 2019-06-27 |  | 2.8d |  |
| 7 |  | K先历史表 | 0.2d | 2019-06-27 | 2019-06-27 |  | 2.8d |  |
| 8 |  | 币种表 | 0.2d | 2019-06-28 | 2019-06-28 |  | 3.8d | start no earlier than 2019-06-28 |
| 9 |  | 交易对表 | 0.2d | 2019-06-28 | 2019-06-28 |  | 3.8d | start no earlier than 2019-06-28 |
| 10 |  | 钱包提币地址管理 | 0.2d | 2019-06-28 | 2019-06-28 |  | 3.8d | start no earlier than 2019-06-28 |
| 11 |  | 充提币钱包记录表 | 0.2d | 2019-06-28 | 2019-06-28 |  | 3.8d | start no earlier than 2019-06-28 |
| 12 |  | 资金划转明细表 | 0.2d | 2019-07-01 | 2019-07-01 |  | 2.8d | start no earlier than 2019-07-01 |
| 13 | 2.11 | **币币交易功能模块** | 21d | 2019-07-01 | 2019-07-29 |  |  |  |
| 14 | 2.11.1 | **币币交易接口** | 21d | 2019-07-01 | 2019-07-29 |  |  |  |
| 15 |  | 查询所有交易对信息接口 | 1d? | 2019-07-01 | 2019-07-01 |  | -9d |  |
| 16 |  | 查询个人当前委托接口 | 1d? | 2019-07-01 | 2019-07-01 |  | -7d |  |
| 17 |  | 查询个人历史委托接口 | 1d? | 2019-07-02 | 2019-07-02 | 15 | -17d |  |
| 18 |  | 查询个人成交明细接口 | 1d? | 2019-07-03 | 2019-07-03 | 17 | -17d |  |
| 19 |  | 限价买入/市价买入接口 | 1d? | 2019-07-04 | 2019-07-04 | 16, 18 | -17d |  |
| 20 |  | 限价卖出/市价卖出接口 | 1d | 2019-07-05 | 2019-07-05 | 19 | -17d |  |
| 21 |  | 个人委托撤单接口 | 1d | 2019-07-08 | 2019-07-08 | 20 | -17d |  |
| 22 |  | 个人实时成交数据接口 | 1d | 2019-07-09 | 2019-07-09 | 21 | -17d |  |
| 23 |  | 查询用户钱包 | 1d | 2019-07-10 | 2019-07-10 | 22 | -17d |  |
| 24 |  | 查询K先历史数据接口 | 1d | 2019-07-11 | 2019-07-11 | 23 | -17d |  |
| 25 |  | websocket推送实时行情程序 | 4d | 2019-07-12 | 2019-07-17 | 24 | -17d |  |
| 26 |  | 从okex获取K线历史数据 | 4d | 2019-07-18 | 2019-07-23 | 25 | -17d |  |
| 27 |  | 从okex获取交易对行情价 | 4d | 2019-07-24 | 2019-07-29 | 26 | -17d |  |
| 28 |  | 币币交易订单撮合程序 | 5d | 2019-07-30 | 2019-08-05 | 27 | -17d |  |
| 29 |  | 生成K线、行情数据程序 | 5d | 2019-08-06 | 2019-08-12 | 28 | -17d |  |
| 30 |  | 获取汇率接口 | 2d | 2019-08-13 | 2019-08-14 | 29 | -17d |  |
| 31 |  | 机器人刷单程序 | 5d | 2019-08-15 | 2019-08-21 | 30 | -17d |  |
| 32 | 2.12 | **币币交易功能模块** | 14d? | 2019-07-01 | 2019-07-18 |  | -13d |  |
| 33 |  | 提币功能 | 4d | 2019-07-01 | 2019-07-04 |  | -7d | start no earlier than 2019-07-01 |
| 34 |  | 充币功能 | 4d | 2019-07-05 | 2019-07-10 | 33 | -7d |  |
| 35 |  | 充币记录 | 1d? | 2019-07-10 | 2019-07-10 |  | -10d | start no earlier than 2019-07-10 |
| 36 |  | 提币记录 | 1d? | 2019-07-11 | 2019-07-11 | 35 | -10d |  |
| 37 |  | C2C钱包和币币钱包划转 | 2d | 2019-07-12 | 2019-07-15 | 36 | -10d |  |
| 38 |  | C2C钱包和币币钱包划转记录 | 1d? | 2019-07-12 | 2019-07-12 |  | -9d | start no earlier than 2019-07-12 |
| 39 |  | 提币地址管理 | 1d? | 2019-07-16 | 2019-07-16 |  | -13d | start no earlier than 2019-07-16 |
| 40 |  | 币币账户资金汇总接口 | 1d? | 2019-07-17 | 2019-07-17 | 39 | -13d |  |
| 41 |  | 币币账户个人钱包信息 | 1d? | 2019-07-18 | 2019-07-18 | 40 | -13d |  |

## Version 2 (saved 2019-07-15)

Note of the change: 2019年7月15日 11:45:14

Last finish stays 2019-08-21.

Changed:

| ID | Task | Total float | Other |
| --- | --- | --- | --- |
| 15 | 查询所有交易对信息接口 | -9d → -17d | resources 黑带/绿带 → none |
| 16 | 查询个人当前委托接口 | -7d → -15d | resources 工作组 → none |
| 17 | 查询个人历史委托接口 |  | resources 工作组 → none |
| 18 | 查询个人成交明细接口 |  | resources 工作组 → none |
| 19 | 限价买入/市价买入接口 |  | resources 黑带/绿带 → none |
| 33 | 提币功能 | -7d → 30d | resources 工作组 → none |
| 34 | 充币功能 | -7d → 30d | resources 工作组 → none |
